# MEP_Start_Scenario_1n2_rev01_20260930

Schedule from MS Project XML, 2027-01-04 to 2027-05-24.

## Calendars

- UK207-Watford Data Center Project: Mon-Fri 08:00-12:00, 13:00-17:00; Sat-Sun off. Exceptions (off unless hours are given): 2027-03-26 (Good Friday_2027), 2027-03-29 (Easter Monday_2027), 2027-05-03 (Early May_2027).

## Schedule

| ID | WBS | Task | Type | Duration | Start | Finish | Predecessors | Total slack | Free slack | Activity ID | Custom ID | Pred 1 |
| --- | --- | --- | --- | --- | --- | --- | --- | --- | --- | --- | --- | --- |
| 1 | 1 | **Option 1** |  | 98d | 2027-01-04 | 2027-05-24 |  | -1d |  | UK207- |  |  |
| 2 | 1.1 | CDM Construction Phase Plan approved by the Principal Contractor (CDM 2015 Reg 12) |  | 1d | 2027-01-04 | 2027-01-04 |  | -1d |  | UK207-CDM-010 | CDM-010 |  |
| 3 | 1.2 | F10 notification submitted to HSE, if the project is notifiable (CDM 2015 Reg 6) |  | 1d | 2027-01-05 | 2027-01-05 | 2 | -1d |  | UK207-CDM-020 | CDM-020 | CDM-010 |
| 4 | 1.3 | Site establishment & welfare facilities, critical zone (CDM 2015 Schedule 2) |  | 5d | 2027-01-06 | 2027-01-12 | 3 | -1d |  | UK207-CDM-030 | CDM-030 | CDM-020 |
| 5 | 1.4 | Temporary Works Coordinator appointed; TW design brief issued (piling platform, excavation support, slab falsework) |  | 4d | 2027-01-05 | 2027-01-08 | 3SS | 3d | 4d | UK207-CDM-040 | CDM-040 | CDM-020 |
| 6 | 1.5 | Utility survey / CAT scan & permit-to-dig, critical zone |  | 2d | 2027-01-13 | 2027-01-14 | 4 | -1d |  | UK207-SUB-010 | SUB-010 | CDM-030 |
| 7 | 1.6 | Piling mat / temporary working platform, critical zone |  | 3d | 2027-01-15 | 2027-01-19 | 6, 5 | -1d |  | UK207-SUB-020 | SUB-020 | SUB-010 |
| 8 | 1.7 | Driven pile installation, critical zone footprint (indicative — pile type not yet confirmed, driven assumed) |  | 3d | 2027-01-20 | 2027-01-22 | 7 | -1d |  | UK207-SUB-030 | SUB-030 | SUB-020 |
| 9 | 1.8 | Pile integrity testing (indicative allowance) |  | 1d | 2027-01-26 | 2027-01-26 | 8FS+1d | -1d |  | UK207-SUB-040 | SUB-040 | SUB-030 |
| 10 | 1.9 | Excavate to pile cut-off / pile cap formation level |  | 3d | 2027-01-27 | 2027-01-29 | 9 | -1d |  | UK207-SUB-050 | SUB-050 | SUB-040 |
| 11 | 1.10 | Cut piles to cut-off level & prepare starter bars |  | 2d | 2027-02-01 | 2027-02-02 | 10 | -1d |  | UK207-SUB-060 | SUB-060 | SUB-050 |
| 12 | 1.11 | Blinding concrete, pile caps & ground beams |  | 1d | 2027-02-03 | 2027-02-03 | 11 | -1d |  | UK207-SUB-070 | SUB-070 | SUB-060 |
| 13 | 1.12 | Pile caps & ground beams: reinforcement fixing |  | 3d | 2027-02-05 | 2027-02-09 | 12FS+1d | -1d |  | UK207-SUB-080 | SUB-080 | SUB-070 |
| 14 | 1.13 | Pile caps & ground beams: formwork |  | 2d | 2027-02-08 | 2027-02-09 | 13SS+1d | -1d |  | UK207-SUB-090 | SUB-090 | SUB-080 |
| 15 | 1.14 | Pile caps & ground beams: concrete pour |  | 1d | 2027-02-10 | 2027-02-10 | 14 | -1d |  | UK207-SUB-100 | SUB-100 | SUB-090 |
| 16 | 1.15 | Pile caps & ground beams: cure |  | 3d | 2027-02-11 | 2027-02-15 | 15 | -1d |  | UK207-SUB-110 | SUB-110 | SUB-100 |
| 17 | 1.16 | Pile caps & ground beams: formwork strike |  | 1d | 2027-02-16 | 2027-02-16 | 16 | -1d |  | UK207-SUB-120 | SUB-120 | SUB-110 |
| 18 | 1.17 | Backfill & compact around pile caps/ground beams |  | 2d | 2027-02-17 | 2027-02-18 | 17 | -1d |  | UK207-SUB-130 | SUB-130 | SUB-120 |
| 19 | 1.18 | Ground floor RC columns: reinforcement fixing |  | 3d | 2027-02-19 | 2027-02-23 | 18 | -1d |  | UK207-COL-010 | COL-010 | SUB-130 |
| 20 | 1.19 | Ground floor RC columns: formwork |  | 2d | 2027-02-22 | 2027-02-23 | 19SS+1d | -1d |  | UK207-COL-020 | COL-020 | COL-010 |
| 21 | 1.20 | Ground floor RC columns: concrete pour |  | 1d | 2027-02-24 | 2027-02-24 | 20 | -1d |  | UK207-COL-030 | COL-030 | COL-020 |
| 22 | 1.21 | Ground floor RC columns: cure |  | 2d | 2027-02-25 | 2027-02-26 | 21 | -1d |  | UK207-COL-040 | COL-040 | COL-030 |
| 23 | 1.22 | Ground floor RC columns: formwork strike |  | 1d | 2027-03-01 | 2027-03-01 | 22 | -1d |  | UK207-COL-050 | COL-050 | COL-040 |
| 24 | 1.23 | Level 1 slab: falsework/propping erected (per Temporary Works design) |  | 3d | 2027-03-02 | 2027-03-04 | 23 | -1d |  | UK207-L1S-010 | L1S-010 | COL-050 |
| 25 | 1.24 | Level 1 slab: soffit formwork |  | 3d | 2027-03-03 | 2027-03-05 | 24SS+1d | -1d |  | UK207-L1S-020 | L1S-020 | L1S-010 |
| 26 | 1.25 | Level 1 slab: reinforcement fixing + cast-in MEP penetrations/sleeves |  | 4d | 2027-03-04 | 2027-03-09 | 25SS+1d | -1d |  | UK207-L1S-030 | L1S-030 | L1S-020 |
| 27 | 1.26 | Level 1 slab: concrete pour — T0 (critical zone's local slab pour) |  | 1d | 2027-03-10 | 2027-03-10 | 26 | -1d |  | UK207-L1S-040 | L1S-040 | L1S-030 |
| 28 | 1.27 | Level 1 slab: cure to strike/loading strength |  | 7d | 2027-03-11 | 2027-03-19 | 27 | -1d |  | UK207-L1S-050 | L1S-050 | L1S-040 |
| 29 | 1.28 | Level 1 slab: soffit formwork strike & clean |  | 4d | 2027-03-22 | 2027-03-25 | 28 | -1d |  | UK207-L1S-060 | L1S-060 | L1S-050 |
| 30 | 1.29 | 1.40 m fill |  | 5d | 2027-03-30 | 2027-04-05 | 29 | -1d |  | UK207-GF1-010 | GF1-010 | L1S-060 |
| 31 | 1.30 | Slab-on-Grade: prep + reinforcement + pour |  | 6d | 2027-04-06 | 2027-04-13 | 30 | -1d |  | UK207-GF1-020 | GF1-020 | GF1-010 |
| 32 | 1.31 | Slab-on-Grade: minimum cure (before loading) |  | 7d | 2027-04-14 | 2027-04-22 | 31 | -1d |  | UK207-GF1-030 | GF1-030 | GF1-020 |
| 33 | 1.32 | Blockwork wall (on the SoG, critical zone facade) |  | 9d | 2027-04-23 | 2027-05-06 | 32 | -1d |  | UK207-FCD1-010 | FCD1-010 | GF1-030 |
| 34 | 1.33 | Secondary steel + facade cladding (on the wall) |  | 12d | 2027-05-07 | 2027-05-24 | 33 | -1d |  | UK207-FCD1-020 | FCD1-020 | FCD1-010 |
| 35 | 1.34 | Housekeeping pads/plinths, ground floor equipment bases (RMU/TX/Electrical Room) |  | 3d | 2027-04-23 | 2027-04-27 | 32 | 18d |  | UK207-HKP-010 | HKP-010 | GF1-030 |
| 36 | 1.35 | MEP START — Ground Floor (critical zone) | milestone | 0d | 2027-05-24 | 2027-05-24 | 35, 34 |  |  | UK207-MS-GF | MS-GF | HKP-010 |
| 37 | 1.36 | MEP START — Level 1 (critical zone) | milestone | 0d | 2027-05-24 | 2027-05-24 | 29, 34 | -1d |  | UK207-MS-L1 | MS-L1 | L1S-060 |

| ID | WBS | Task | Type | Duration | Start | Finish | Predecessors | Total slack | Free slack | Activity ID | Custom ID | Pred 1 |
| --- | --- | --- | --- | --- | --- | --- | --- | --- | --- | --- | --- | --- |
| 38 | 1.37 | **Option 2** |  | 80d | 2027-01-04 | 2027-04-27 |  | 18d |  | UK207- |  |  |
| 39 | 1.37.1 | CDM Construction Phase Plan approved by the Principal Contractor (CDM 2015 Reg 12) |  | 1d | 2027-01-04 | 2027-01-04 |  | 18d |  | UK207-CDM-010 | CDM-010 |  |
| 40 | 1.37.2 | F10 notification submitted to HSE, if the project is notifiable (CDM 2015 Reg 6) |  | 1d | 2027-01-05 | 2027-01-05 | 39 | 18d |  | UK207-CDM-020 | CDM-020 | CDM-010 |
| 41 | 1.37.3 | Site establishment & welfare facilities, critical zone (CDM 2015 Schedule 2) |  | 5d | 2027-01-06 | 2027-01-12 | 40 | 18d |  | UK207-CDM-030 | CDM-030 | CDM-020 |
| 42 | 1.37.4 | Temporary Works Coordinator appointed; TW design brief issued (piling platform, excavation support, slab falsework) |  | 4d | 2027-01-05 | 2027-01-08 | 40SS | 22d | 4d | UK207-CDM-040 | CDM-040 | CDM-020 |
| 43 | 1.37.5 | Utility survey / CAT scan & permit-to-dig, critical zone |  | 2d | 2027-01-13 | 2027-01-14 | 41 | 18d |  | UK207-SUB-010 | SUB-010 | CDM-030 |
| 44 | 1.37.6 | Piling mat / temporary working platform, critical zone |  | 3d | 2027-01-15 | 2027-01-19 | 43, 42 | 18d |  | UK207-SUB-020 | SUB-020 | SUB-010 |
| 45 | 1.37.7 | Driven pile installation, critical zone footprint (indicative — pile type not yet confirmed, driven assumed) |  | 3d | 2027-01-20 | 2027-01-22 | 44 | 18d |  | UK207-SUB-030 | SUB-030 | SUB-020 |
| 46 | 1.37.8 | Pile integrity testing (indicative allowance) |  | 1d | 2027-01-26 | 2027-01-26 | 45FS+1d | 18d |  | UK207-SUB-040 | SUB-040 | SUB-030 |
| 47 | 1.37.9 | Excavate to pile cut-off / pile cap formation level |  | 3d | 2027-01-27 | 2027-01-29 | 46 | 18d |  | UK207-SUB-050 | SUB-050 | SUB-040 |
| 48 | 1.37.10 | Cut piles to cut-off level & prepare starter bars |  | 2d | 2027-02-01 | 2027-02-02 | 47 | 18d |  | UK207-SUB-060 | SUB-060 | SUB-050 |
| 49 | 1.37.11 | Blinding concrete, pile caps & ground beams |  | 1d | 2027-02-03 | 2027-02-03 | 48 | 18d |  | UK207-SUB-070 | SUB-070 | SUB-060 |
| 50 | 1.37.12 | Pile caps & ground beams: reinforcement fixing |  | 3d | 2027-02-05 | 2027-02-09 | 49FS+1d | 18d |  | UK207-SUB-080 | SUB-080 | SUB-070 |
| 51 | 1.37.13 | Pile caps & ground beams: formwork |  | 2d | 2027-02-08 | 2027-02-09 | 50SS+1d | 18d |  | UK207-SUB-090 | SUB-090 | SUB-080 |
| 52 | 1.37.14 | Pile caps & ground beams: concrete pour |  | 1d | 2027-02-10 | 2027-02-10 | 51 | 18d |  | UK207-SUB-100 | SUB-100 | SUB-090 |
| 53 | 1.37.15 | Pile caps & ground beams: cure |  | 3d | 2027-02-11 | 2027-02-15 | 52 | 18d |  | UK207-SUB-110 | SUB-110 | SUB-100 |
| 54 | 1.37.16 | Pile caps & ground beams: formwork strike |  | 1d | 2027-02-16 | 2027-02-16 | 53 | 18d |  | UK207-SUB-120 | SUB-120 | SUB-110 |
| 55 | 1.37.17 | Backfill & compact around pile caps/ground beams |  | 2d | 2027-02-17 | 2027-02-18 | 54 | 18d |  | UK207-SUB-130 | SUB-130 | SUB-120 |
| 56 | 1.37.18 | Ground floor RC columns: reinforcement fixing |  | 3d | 2027-02-19 | 2027-02-23 | 55 | 18d |  | UK207-COL-010 | COL-010 | SUB-130 |
| 57 | 1.37.19 | Ground floor RC columns: formwork |  | 2d | 2027-02-22 | 2027-02-23 | 56SS+1d | 18d |  | UK207-COL-020 | COL-020 | COL-010 |
| 58 | 1.37.20 | Ground floor RC columns: concrete pour |  | 1d | 2027-02-24 | 2027-02-24 | 57 | 18d |  | UK207-COL-030 | COL-030 | COL-020 |
| 59 | 1.37.21 | Ground floor RC columns: cure |  | 2d | 2027-02-25 | 2027-02-26 | 58 | 18d |  | UK207-COL-040 | COL-040 | COL-030 |
| 60 | 1.37.22 | Ground floor RC columns: formwork strike |  | 1d | 2027-03-01 | 2027-03-01 | 59 | 18d |  | UK207-COL-050 | COL-050 | COL-040 |
| 61 | 1.37.23 | Level 1 slab: falsework/propping erected (per Temporary Works design) |  | 3d | 2027-03-02 | 2027-03-04 | 60 | 18d |  | UK207-L1S-010 | L1S-010 | COL-050 |
| 62 | 1.37.24 | Level 1 slab: soffit formwork |  | 3d | 2027-03-03 | 2027-03-05 | 61SS+1d | 18d |  | UK207-L1S-020 | L1S-020 | L1S-010 |
| 63 | 1.37.25 | Level 1 slab: reinforcement fixing + cast-in MEP penetrations/sleeves |  | 4d | 2027-03-04 | 2027-03-09 | 62SS+1d | 18d |  | UK207-L1S-030 | L1S-030 | L1S-020 |
| 64 | 1.37.26 | Level 1 slab: concrete pour — T0 (critical zone's local slab pour) |  | 1d | 2027-03-10 | 2027-03-10 | 63 | 18d |  | UK207-L1S-040 | L1S-040 | L1S-030 |
| 65 | 1.37.27 | Level 1 slab: cure to strike/loading strength |  | 7d | 2027-03-11 | 2027-03-19 | 64 | 18d |  | UK207-L1S-050 | L1S-050 | L1S-040 |
| 66 | 1.37.28 | Level 1 slab: soffit formwork strike & clean |  | 4d | 2027-03-22 | 2027-03-25 | 65 | 18d |  | UK207-L1S-060 | L1S-060 | L1S-050 |
| 67 | 1.37.29 | 1.40 m fill |  | 5d | 2027-03-30 | 2027-04-05 | 66 | 18d |  | UK207-GF2-010 | GF2-010 | L1S-060 |
| 68 | 1.37.30 | Slab-on-Grade: prep + reinforcement + pour |  | 6d | 2027-04-06 | 2027-04-13 | 67 | 18d |  | UK207-GF2-020 | GF2-020 | GF2-010 |
| 69 | 1.37.31 | Slab-on-Grade: minimum cure (before loading) |  | 7d | 2027-04-14 | 2027-04-22 | 68 | 18d |  | UK207-GF2-030 | GF2-030 | GF2-020 |
| 70 | 1.37.32 | Secondary steel + facade cladding, critical zone (no wall) |  | 12d | 2027-03-22 | 2027-04-08 | 65 | 31d |  | UK207-FCD2-010 | FCD2-010 | L1S-050 |
| 71 | 1.37.33 | Housekeeping pads/plinths, ground floor equipment bases (RMU/TX/Electrical Room) |  | 3d | 2027-04-23 | 2027-04-27 | 69 | 18d |  | UK207-HKP-010 | HKP-010 | GF2-030 |
| 72 | 1.37.34 | MEP START — Ground Floor (critical zone) | milestone | 0d | 2027-04-27 | 2027-04-27 | 71, 70 | 18d |  | UK207-MS-GF | MS-GF | HKP-010 |
| 73 | 1.37.35 | MEP START — Level 1 (critical zone) | milestone | 0d | 2027-04-08 | 2027-04-08 | 66, 70 | 31d |  | UK207-MS-L1 | MS-L1 | L1S-060 |
