# MEP_Start_Scenario_1n2_rev02_20260930

Schedule from MS Project XML, 2027-01-04 to 2027-08-23.

## Calendars

- UK207-Watford Data Center Project: Mon-Fri 08:00-12:00, 13:00-17:00; Sat-Sun off. Exceptions (off unless hours are given): 2027-03-26 (Good Friday_2027), 2027-03-29 (Easter Monday_2027), 2027-05-03 (Early May_2027), 2027-05-31 (Spring_2027).

## Schedule

| ID | WBS | Task | Type | Duration | Start | Finish | Predecessors | Total slack | Free slack | Activity ID | Custom ID | Pred 1 |
| --- | --- | --- | --- | --- | --- | --- | --- | --- | --- | --- | --- | --- |
| 1 | 1 | **Option 1** |  | 162d | 2027-01-04 | 2027-08-23 |  | -1d |  | UK207- |  |  |
| 2 | 1.1 | CDM Construction Phase Plan approved by the Principal Contractor (CDM 2015 Reg 12) |  | 1d | 2027-01-04 | 2027-01-04 |  | -1d |  | UK207-CDM-010 | CDM-010 |  |
| 3 | 1.2 | F10 notification submitted to HSE, if the project is notifiable (CDM 2015 Reg 6) |  | 1d | 2027-01-05 | 2027-01-05 | 2 | -1d |  | UK207-CDM-020 | CDM-020 | CDM-010 |
| 4 | 1.3 | Site establishment & welfare facilities, critical zone (CDM 2015 Schedule 2) |  | 5d | 2027-01-06 | 2027-01-12 | 3 | -1d |  | UK207-CDM-030 | CDM-030 | CDM-020 |
| 5 | 1.4 | Temporary Works Coordinator appointed; TW design brief issued (piling platform, excavation support, slab falsework) |  | 4d | 2027-01-05 | 2027-01-08 | 3SS | 3d | 4d | UK207-CDM-040 | CDM-040 | CDM-020 |
| 6 | 1.5 | Utility survey / CAT scan & permit-to-dig, critical zone |  | 2d | 2027-01-13 | 2027-01-14 | 4 | -1d |  | UK207-SUB-010 | SUB-010 | CDM-030 |
| 7 | 1.6 | Piling mat / temporary working platform, critical zone |  | 3d | 2027-01-15 | 2027-01-19 | 6, 5 | -1d |  | UK207-SUB-020 | SUB-020 | SUB-010 |
| 8 | 1.7 | Driven pile installation, critical zone footprint (indicative — pile type not yet confirmed, driven assumed) |  | 5d | 2027-01-20 | 2027-01-26 | 7 | -1d |  | UK207-SUB-030 | SUB-030 | SUB-020 |
| 9 | 1.8 | Pile integrity testing (indicative allowance) |  | 1d | 2027-01-28 | 2027-01-28 | 8FS+1d | -1d |  | UK207-SUB-040 | SUB-040 | SUB-030 |
| 10 | 1.9 | Excavate to pile cut-off / pile cap formation level |  | 3d | 2027-01-29 | 2027-02-02 | 9 | -1d |  | UK207-SUB-050 | SUB-050 | SUB-040 |
| 11 | 1.10 | Cut piles to cut-off level & prepare starter bars |  | 2d | 2027-02-03 | 2027-02-04 | 10 | -1d |  | UK207-SUB-060 | SUB-060 | SUB-050 |
| 12 | 1.11 | Blinding concrete, pile caps & ground beams |  | 1d | 2027-02-05 | 2027-02-05 | 11 | -1d |  | UK207-SUB-070 | SUB-070 | SUB-060 |
| 13 | 1.12 | Pile caps & ground beams: reinforcement fixing |  | 6d | 2027-02-09 | 2027-02-16 | 12FS+1d | -1d |  | UK207-SUB-080 | SUB-080 | SUB-070 |
| 14 | 1.13 | Pile caps & ground beams: formwork |  | 2d | 2027-02-10 | 2027-02-11 | 13SS+1d | -1d |  | UK207-SUB-090 | SUB-090 | SUB-080 |
| 15 | 1.14 | Pile caps & ground beams: concrete pour |  | 1d | 2027-02-12 | 2027-02-12 | 14 | -1d |  | UK207-SUB-100 | SUB-100 | SUB-090 |
| 16 | 1.15 | Pile caps & ground beams: cure |  | 3d | 2027-02-15 | 2027-02-17 | 15 | -1d |  | UK207-SUB-110 | SUB-110 | SUB-100 |
| 17 | 1.16 | Pile caps & ground beams: formwork strike |  | 1d | 2027-02-18 | 2027-02-18 | 16 | -1d |  | UK207-SUB-120 | SUB-120 | SUB-110 |
| 18 | 1.17 | Backfill & compact around pile caps/ground beams |  | 2d | 2027-02-19 | 2027-02-22 | 17 | -1d |  | UK207-SUB-130 | SUB-130 | SUB-120 |
| 19 | 1.37 | Raft foundation, critical zone: blinding & DPM |  | 2d | 2027-02-23 | 2027-02-24 | 18 | -1d |  |  |  |  |
| 20 | 1.38 | Raft foundation, critical zone: reinforcement fixing incl. column starter bars |  | 9d | 2027-02-25 | 2027-03-09 | 19 | -1d |  |  |  |  |
| 21 | 1.39 | Raft foundation, critical zone: edge formwork & stop-ends |  | 3d | 2027-03-01 | 2027-03-03 | 20SS+2d | 3d | 4d |  |  |  |
| 22 | 1.40 | Raft foundation, critical zone: concrete pour (in bays) |  | 2d | 2027-03-10 | 2027-03-11 | 20, 21 | -1d |  |  |  |  |
| 23 | 1.41 | Raft foundation, critical zone: cure (to load columns) |  | 3d | 2027-03-12 | 2027-03-16 | 22 | -1d |  |  |  |  |
| 24 | 1.18 | Ground floor RC columns: reinforcement fixing |  | 3d | 2027-03-17 | 2027-03-19 | 23 | -1d |  | UK207-COL-010 | COL-010 | SUB-130 |
| 25 | 1.19 | Ground floor RC columns: formwork |  | 2d | 2027-03-18 | 2027-03-19 | 24SS+1d | -1d |  | UK207-COL-020 | COL-020 | COL-010 |
| 26 | 1.20 | Ground floor RC columns: concrete pour |  | 1d | 2027-03-22 | 2027-03-22 | 25 | -1d |  | UK207-COL-030 | COL-030 | COL-020 |
| 27 | 1.21 | Ground floor RC columns: cure |  | 2d | 2027-03-23 | 2027-03-24 | 26 | -1d |  | UK207-COL-040 | COL-040 | COL-030 |
| 28 | 1.22 | Ground floor RC columns: formwork strike |  | 1d | 2027-03-25 | 2027-03-25 | 27 | -1d |  | UK207-COL-050 | COL-050 | COL-040 |
| 29 | 1.23 | Level 1 slab: falsework/propping erected (per Temporary Works design) |  | 3d | 2027-03-30 | 2027-04-01 | 28 | -1d |  | UK207-L1S-010 | L1S-010 | COL-050 |
| 30 | 1.24 | Level 1 slab: soffit formwork |  | 3d | 2027-03-31 | 2027-04-02 | 29SS+1d | -1d |  | UK207-L1S-020 | L1S-020 | L1S-010 |
| 31 | 1.25 | Level 1 slab: reinforcement fixing + cast-in MEP penetrations/sleeves |  | 4d | 2027-04-01 | 2027-04-06 | 30SS+1d | -1d |  | UK207-L1S-030 | L1S-030 | L1S-020 |
| 32 | 1.26 | Level 1 slab: concrete pour — T0 (critical zone's local slab pour) |  | 1d | 2027-04-07 | 2027-04-07 | 31 | -1d |  | UK207-L1S-040 | L1S-040 | L1S-030 |
| 33 | 1.27 | Level 1 slab: cure to strike/loading strength |  | 7d | 2027-04-08 | 2027-04-16 | 32 | -1d |  | UK207-L1S-050 | L1S-050 | L1S-040 |
| 34 | 1.28 | Level 1 slab: soffit formwork strike & clean |  | 8d | 2027-04-19 | 2027-04-28 | 33 | -1d |  | UK207-L1S-060 | L1S-060 | L1S-050 |
| 35 | 1.29 | 1.40 m fill |  | 10d | 2027-04-29 | 2027-05-13 | 34 | -1d |  | UK207-GF1-010 | GF1-010 | L1S-060 |
| 36 | 1.30 | Slab-on-Grade: prep + reinforcement + pour |  | 11d | 2027-05-14 | 2027-05-28 | 35 | -1d |  | UK207-GF1-020 | GF1-020 | GF1-010 |
| 37 | 1.31 | Slab-on-Grade: minimum cure (before loading) |  | 7d | 2027-06-01 | 2027-06-09 | 36 | -1d |  | UK207-GF1-030 | GF1-030 | GF1-020 |
| 38 | 1.32 | Blockwork wall (on the SoG, critical zone facade) |  | 23d | 2027-06-10 | 2027-07-12 | 37 | -1d |  | UK207-FCD1-010 | FCD1-010 | GF1-030 |
| 39 | 1.33 | Secondary steel + facade cladding (on the wall) |  | 30d | 2027-07-13 | 2027-08-23 | 38 | -1d |  | UK207-FCD1-020 | FCD1-020 | FCD1-010 |
| 40 | 1.34 | Housekeeping pads/plinths, ground floor equipment bases (RMU/TX/Electrical Room) |  | 3d | 2027-06-10 | 2027-06-14 | 37 | 50d |  | UK207-HKP-010 | HKP-010 | GF1-030 |
| 41 | 1.42 | Housekeeping pads/plinths, Level 1 equipment bases (Substation Phase-1 / RMU / TX / Electrical Rooms) |  | 4d | 2027-04-19 | 2027-04-22 | 33 | 84d | 85d |  |  |  |
| 42 | 1.35 | MEP START — Ground Floor (bands below Phase 1 zone; serve DH-1/DH-2) | milestone | 0d | 2027-08-23 | 2027-08-23 | 40, 39 |  |  | UK207-MS-GF | MS-GF | HKP-010 |
| 43 | 1.36 | MEP START — Level 1 (Phase 1: Substation Phase-1 + DH-3/DH-4 electrical bands) | milestone | 0d | 2027-08-23 | 2027-08-23 | 34, 39, 41 | -1d |  | UK207-MS-L1 | MS-L1 | L1S-060 |

Notes:
- 20: Indicative rate 150 m2/day over ~1,246 m2 (assumption, not a measured rate).
- 42: Critical zone (rev02): Phase 1 = Data Hall-3/Data Hall-4 (Level 1). Zone = Substation Phase-1 (DC-L1-44/45, grid 1-2/A-B) + north electrical band grid 1-11/A-B + south electrical band grid 2-11/F-G, Ground + Level 1 stacked. Footprint ~1,246 m2/floor, facade ~1,330 m2 (GF+L1, north+south+west end). Quantities read from RIBA 2 plans 12001/13001/14001; indicative only.
- 43: Critical zone (rev02): Phase 1 = Data Hall-3/Data Hall-4 (Level 1). Zone = Substation Phase-1 (DC-L1-44/45, grid 1-2/A-B) + north electrical band grid 1-11/A-B + south electrical band grid 2-11/F-G, Ground + Level 1 stacked. Footprint ~1,246 m2/floor, facade ~1,330 m2 (GF+L1, north+south+west end). Quantities read from RIBA 2 plans 12001/13001/14001; indicative only.

| ID | WBS | Task | Type | Duration | Start | Finish | Predecessors | Total slack | Free slack | Activity ID | Custom ID | Pred 1 |
| --- | --- | --- | --- | --- | --- | --- | --- | --- | --- | --- | --- | --- |
| 44 | 1.43 | **Office basement (grid 11-13 / C'-G, -4.00 m) — outside critical zone, parallel** |  | 57d | 2027-01-15 | 2027-04-07 |  | 96d |  |  |  |  |
| 45 | 1.43.1 | Basement: excavation support installation (per TW design) |  | 5d | 2027-01-15 | 2027-01-21 | 6, 5 | 96d |  |  |  |  |
| 46 | 1.43.2 | Basement: bulk excavation to formation level |  | 5d | 2027-01-22 | 2027-01-28 | 45 | 96d |  |  |  |  |
| 47 | 1.43.3 | Basement: driven piles |  | 2d | 2027-01-29 | 2027-02-01 | 46, 8 | 96d |  |  |  |  |
| 48 | 1.43.4 | Basement: pile testing & cut-down |  | 2d | 2027-02-03 | 2027-02-04 | 47FS+1d | 96d |  |  |  |  |
| 49 | 1.43.5 | Basement: blinding |  | 1d | 2027-02-05 | 2027-02-05 | 48 | 96d |  |  |  |  |
| 50 | 1.43.6 | Basement: below-ground waterproofing to raft (BS 8102) |  | 3d | 2027-02-08 | 2027-02-10 | 49 | 96d |  |  |  |  |
| 51 | 1.43.7 | Basement raft: reinforcement fixing incl. wall starters |  | 4d | 2027-02-11 | 2027-02-16 | 50 | 96d |  |  |  |  |
| 52 | 1.43.8 | Basement raft: concrete pour |  | 1d | 2027-02-17 | 2027-02-17 | 51 | 96d |  |  |  |  |
| 53 | 1.43.9 | Basement raft: cure |  | 3d | 2027-02-18 | 2027-02-22 | 52 | 96d |  |  |  |  |
| 54 | 1.43.10 | Basement retaining walls: reinforcement & formwork |  | 8d | 2027-02-23 | 2027-03-04 | 53 | 96d |  |  |  |  |
| 55 | 1.43.11 | Basement retaining walls: concrete pour |  | 1d | 2027-03-05 | 2027-03-05 | 54 | 96d |  |  |  |  |
| 56 | 1.43.12 | Basement retaining walls: cure & strike |  | 3d | 2027-03-08 | 2027-03-10 | 55 | 96d |  |  |  |  |
| 57 | 1.43.13 | Basement: external waterproofing to walls & backfill |  | 4d | 2027-03-11 | 2027-03-16 | 56 | 96d |  |  |  |  |
| 58 | 1.43.14 | Ground floor slab over basement: falsework, formwork & reinforcement |  | 6d | 2027-03-17 | 2027-03-24 | 57 | 96d |  |  |  |  |
| 59 | 1.43.15 | Ground floor slab over basement: concrete pour |  | 1d | 2027-03-25 | 2027-03-25 | 58 | 96d |  |  |  |  |
| 60 | 1.43.16 | Ground floor slab over basement: cure |  | 7d | 2027-03-30 | 2027-04-07 | 59 | 96d |  |  |  |  |
| 61 | 1.37 | **Option 2** |  | 112d | 2027-01-04 | 2027-06-14 |  | 50d |  | UK207- |  |  |
| 62 | 1.37.1 | CDM Construction Phase Plan approved by the Principal Contractor (CDM 2015 Reg 12) |  | 1d | 2027-01-04 | 2027-01-04 |  | 50d |  | UK207-CDM-010 | CDM-010 |  |
| 63 | 1.37.2 | F10 notification submitted to HSE, if the project is notifiable (CDM 2015 Reg 6) |  | 1d | 2027-01-05 | 2027-01-05 | 62 | 50d |  | UK207-CDM-020 | CDM-020 | CDM-010 |
| 64 | 1.37.3 | Site establishment & welfare facilities, critical zone (CDM 2015 Schedule 2) |  | 5d | 2027-01-06 | 2027-01-12 | 63 | 50d |  | UK207-CDM-030 | CDM-030 | CDM-020 |
| 65 | 1.37.4 | Temporary Works Coordinator appointed; TW design brief issued (piling platform, excavation support, slab falsework) |  | 4d | 2027-01-05 | 2027-01-08 | 63SS | 54d | 4d | UK207-CDM-040 | CDM-040 | CDM-020 |
| 66 | 1.37.5 | Utility survey / CAT scan & permit-to-dig, critical zone |  | 2d | 2027-01-13 | 2027-01-14 | 64 | 50d |  | UK207-SUB-010 | SUB-010 | CDM-030 |
| 67 | 1.37.6 | Piling mat / temporary working platform, critical zone |  | 3d | 2027-01-15 | 2027-01-19 | 66, 65 | 50d |  | UK207-SUB-020 | SUB-020 | SUB-010 |
| 68 | 1.37.7 | Driven pile installation, critical zone footprint (indicative — pile type not yet confirmed, driven assumed) |  | 5d | 2027-01-20 | 2027-01-26 | 67 | 50d |  | UK207-SUB-030 | SUB-030 | SUB-020 |
| 69 | 1.37.8 | Pile integrity testing (indicative allowance) |  | 1d | 2027-01-28 | 2027-01-28 | 68FS+1d | 50d |  | UK207-SUB-040 | SUB-040 | SUB-030 |
| 70 | 1.37.9 | Excavate to pile cut-off / pile cap formation level |  | 3d | 2027-01-29 | 2027-02-02 | 69 | 50d |  | UK207-SUB-050 | SUB-050 | SUB-040 |
| 71 | 1.37.10 | Cut piles to cut-off level & prepare starter bars |  | 2d | 2027-02-03 | 2027-02-04 | 70 | 50d |  | UK207-SUB-060 | SUB-060 | SUB-050 |
| 72 | 1.37.11 | Blinding concrete, pile caps & ground beams |  | 1d | 2027-02-05 | 2027-02-05 | 71 | 50d |  | UK207-SUB-070 | SUB-070 | SUB-060 |
| 73 | 1.37.12 | Pile caps & ground beams: reinforcement fixing |  | 6d | 2027-02-09 | 2027-02-16 | 72FS+1d | 50d |  | UK207-SUB-080 | SUB-080 | SUB-070 |
| 74 | 1.37.13 | Pile caps & ground beams: formwork |  | 2d | 2027-02-10 | 2027-02-11 | 73SS+1d | 50d |  | UK207-SUB-090 | SUB-090 | SUB-080 |
| 75 | 1.37.14 | Pile caps & ground beams: concrete pour |  | 1d | 2027-02-12 | 2027-02-12 | 74 | 50d |  | UK207-SUB-100 | SUB-100 | SUB-090 |
| 76 | 1.37.15 | Pile caps & ground beams: cure |  | 3d | 2027-02-15 | 2027-02-17 | 75 | 50d |  | UK207-SUB-110 | SUB-110 | SUB-100 |
| 77 | 1.37.16 | Pile caps & ground beams: formwork strike |  | 1d | 2027-02-18 | 2027-02-18 | 76 | 50d |  | UK207-SUB-120 | SUB-120 | SUB-110 |
| 78 | 1.37.17 | Backfill & compact around pile caps/ground beams |  | 2d | 2027-02-19 | 2027-02-22 | 77 | 50d |  | UK207-SUB-130 | SUB-130 | SUB-120 |
| 79 | 1.37.36 | Raft foundation, critical zone: blinding & DPM |  | 2d | 2027-02-23 | 2027-02-24 | 78 | 50d |  |  |  |  |
| 80 | 1.37.37 | Raft foundation, critical zone: reinforcement fixing incl. column starter bars |  | 9d | 2027-02-25 | 2027-03-09 | 79 | 50d |  |  |  |  |
| 81 | 1.37.38 | Raft foundation, critical zone: edge formwork & stop-ends |  | 3d | 2027-03-01 | 2027-03-03 | 80SS+2d | 54d | 4d |  |  |  |
| 82 | 1.37.39 | Raft foundation, critical zone: concrete pour (in bays) |  | 2d | 2027-03-10 | 2027-03-11 | 80, 81 | 50d |  |  |  |  |
| 83 | 1.37.40 | Raft foundation, critical zone: cure (to load columns) |  | 3d | 2027-03-12 | 2027-03-16 | 82 | 50d |  |  |  |  |
| 84 | 1.37.18 | Ground floor RC columns: reinforcement fixing |  | 3d | 2027-03-17 | 2027-03-19 | 83 | 50d |  | UK207-COL-010 | COL-010 | SUB-130 |
| 85 | 1.37.19 | Ground floor RC columns: formwork |  | 2d | 2027-03-18 | 2027-03-19 | 84SS+1d | 50d |  | UK207-COL-020 | COL-020 | COL-010 |
| 86 | 1.37.20 | Ground floor RC columns: concrete pour |  | 1d | 2027-03-22 | 2027-03-22 | 85 | 50d |  | UK207-COL-030 | COL-030 | COL-020 |
| 87 | 1.37.21 | Ground floor RC columns: cure |  | 2d | 2027-03-23 | 2027-03-24 | 86 | 50d |  | UK207-COL-040 | COL-040 | COL-030 |
| 88 | 1.37.22 | Ground floor RC columns: formwork strike |  | 1d | 2027-03-25 | 2027-03-25 | 87 | 50d |  | UK207-COL-050 | COL-050 | COL-040 |
| 89 | 1.37.23 | Level 1 slab: falsework/propping erected (per Temporary Works design) |  | 3d | 2027-03-30 | 2027-04-01 | 88 | 50d |  | UK207-L1S-010 | L1S-010 | COL-050 |
| 90 | 1.37.24 | Level 1 slab: soffit formwork |  | 3d | 2027-03-31 | 2027-04-02 | 89SS+1d | 50d |  | UK207-L1S-020 | L1S-020 | L1S-010 |
| 91 | 1.37.25 | Level 1 slab: reinforcement fixing + cast-in MEP penetrations/sleeves |  | 4d | 2027-04-01 | 2027-04-06 | 90SS+1d | 50d |  | UK207-L1S-030 | L1S-030 | L1S-020 |
| 92 | 1.37.26 | Level 1 slab: concrete pour — T0 (critical zone's local slab pour) |  | 1d | 2027-04-07 | 2027-04-07 | 91 | 50d |  | UK207-L1S-040 | L1S-040 | L1S-030 |
| 93 | 1.37.27 | Level 1 slab: cure to strike/loading strength |  | 7d | 2027-04-08 | 2027-04-16 | 92 | 50d |  | UK207-L1S-050 | L1S-050 | L1S-040 |
| 94 | 1.37.28 | Level 1 slab: soffit formwork strike & clean |  | 8d | 2027-04-19 | 2027-04-28 | 93 | 50d |  | UK207-L1S-060 | L1S-060 | L1S-050 |
| 95 | 1.37.29 | 1.40 m fill |  | 10d | 2027-04-29 | 2027-05-13 | 94 | 50d |  | UK207-GF2-010 | GF2-010 | L1S-060 |
| 96 | 1.37.30 | Slab-on-Grade: prep + reinforcement + pour |  | 11d | 2027-05-14 | 2027-05-28 | 95 | 50d |  | UK207-GF2-020 | GF2-020 | GF2-010 |
| 97 | 1.37.31 | Slab-on-Grade: minimum cure (before loading) |  | 7d | 2027-06-01 | 2027-06-09 | 96 | 50d |  | UK207-GF2-030 | GF2-030 | GF2-020 |
| 98 | 1.37.32 | Secondary steel + facade cladding, critical zone (no wall) |  | 30d | 2027-04-19 | 2027-06-01 | 93 | 59d |  | UK207-FCD2-010 | FCD2-010 | L1S-050 |
| 99 | 1.37.33 | Housekeeping pads/plinths, ground floor equipment bases (RMU/TX/Electrical Room) |  | 3d | 2027-06-10 | 2027-06-14 | 97 | 50d |  | UK207-HKP-010 | HKP-010 | GF2-030 |
| 100 | 1.37.41 | Housekeeping pads/plinths, Level 1 equipment bases (Substation Phase-1 / RMU / TX / Electrical Rooms) |  | 4d | 2027-04-19 | 2027-04-22 | 93 | 85d | 26d |  |  |  |
| 101 | 1.37.34 | MEP START — Ground Floor (bands below Phase 1 zone; serve DH-1/DH-2) | milestone | 0d | 2027-06-14 | 2027-06-14 | 99, 98 | 50d |  | UK207-MS-GF | MS-GF | HKP-010 |
| 102 | 1.37.35 | MEP START — Level 1 (Phase 1: Substation Phase-1 + DH-3/DH-4 electrical bands) | milestone | 0d | 2027-06-01 | 2027-06-01 | 94, 98, 100 | 59d |  | UK207-MS-L1 | MS-L1 | L1S-060 |

Notes:
- 44: Basement per UK207-100-A1-AP00-12001: fire pump room, 2x water tanks, public health room, stairs, goods lift (~450 m2). Indicative durations; not on the critical zone MEP path. Shared crane/concrete gangs not resource-levelled.
- 80: Indicative rate 150 m2/day over ~1,246 m2 (assumption, not a measured rate).
- 101: Critical zone (rev02): Phase 1 = Data Hall-3/Data Hall-4 (Level 1). Zone = Substation Phase-1 (DC-L1-44/45, grid 1-2/A-B) + north electrical band grid 1-11/A-B + south electrical band grid 2-11/F-G, Ground + Level 1 stacked. Footprint ~1,246 m2/floor, facade ~1,330 m2 (GF+L1, north+south+west end). Quantities read from RIBA 2 plans 12001/13001/14001; indicative only.
- 102: Critical zone (rev02): Phase 1 = Data Hall-3/Data Hall-4 (Level 1). Zone = Substation Phase-1 (DC-L1-44/45, grid 1-2/A-B) + north electrical band grid 1-11/A-B + south electrical band grid 2-11/F-G, Ground + Level 1 stacked. Footprint ~1,246 m2/floor, facade ~1,330 m2 (GF+L1, north+south+west end). Quantities read from RIBA 2 plans 12001/13001/14001; indicative only.

| ID | WBS | Task | Duration | Start | Finish | Predecessors | Total slack |
| --- | --- | --- | --- | --- | --- | --- | --- |
| 103 | 1.37.42 | **Office basement (grid 11-13 / C'-G, -4.00 m) — outside critical zone, parallel** | 57d | 2027-01-15 | 2027-04-07 |  | 96d |
| 104 | 1.37.42.1 | Basement: excavation support installation (per TW design) | 5d | 2027-01-15 | 2027-01-21 | 66, 65 | 96d |
| 105 | 1.37.42.2 | Basement: bulk excavation to formation level | 5d | 2027-01-22 | 2027-01-28 | 104 | 96d |
| 106 | 1.37.42.3 | Basement: driven piles | 2d | 2027-01-29 | 2027-02-01 | 105, 68 | 96d |
| 107 | 1.37.42.4 | Basement: pile testing & cut-down | 2d | 2027-02-03 | 2027-02-04 | 106FS+1d | 96d |
| 108 | 1.37.42.5 | Basement: blinding | 1d | 2027-02-05 | 2027-02-05 | 107 | 96d |
| 109 | 1.37.42.6 | Basement: below-ground waterproofing to raft (BS 8102) | 3d | 2027-02-08 | 2027-02-10 | 108 | 96d |
| 110 | 1.37.42.7 | Basement raft: reinforcement fixing incl. wall starters | 4d | 2027-02-11 | 2027-02-16 | 109 | 96d |
| 111 | 1.37.42.8 | Basement raft: concrete pour | 1d | 2027-02-17 | 2027-02-17 | 110 | 96d |
| 112 | 1.37.42.9 | Basement raft: cure | 3d | 2027-02-18 | 2027-02-22 | 111 | 96d |
| 113 | 1.37.42.10 | Basement retaining walls: reinforcement & formwork | 8d | 2027-02-23 | 2027-03-04 | 112 | 96d |
| 114 | 1.37.42.11 | Basement retaining walls: concrete pour | 1d | 2027-03-05 | 2027-03-05 | 113 | 96d |
| 115 | 1.37.42.12 | Basement retaining walls: cure & strike | 3d | 2027-03-08 | 2027-03-10 | 114 | 96d |
| 116 | 1.37.42.13 | Basement: external waterproofing to walls & backfill | 4d | 2027-03-11 | 2027-03-16 | 115 | 96d |
| 117 | 1.37.42.14 | Ground floor slab over basement: falsework, formwork & reinforcement | 6d | 2027-03-17 | 2027-03-24 | 116 | 96d |
| 118 | 1.37.42.15 | Ground floor slab over basement: concrete pour | 1d | 2027-03-25 | 2027-03-25 | 117 | 96d |
| 119 | 1.37.42.16 | Ground floor slab over basement: cure | 7d | 2027-03-30 | 2027-04-07 | 118 | 96d |

Notes:
- 103: Basement per UK207-100-A1-AP00-12001: fire pump room, 2x water tanks, public health room, stairs, goods lift (~450 m2). Indicative durations; not on the critical zone MEP path. Shared crane/concrete gangs not resource-levelled.
